Schedule from GanttProject, 2020-04-20 to 2020-09-11.

## Calendars

- Project calendar: Mon-Fri working; Sat-Sun off.

## Schedule

| ID | WBS | Task | Duration | Start | Finish | Predecessors | 描述 |
| --- | --- | --- | --- | --- | --- | --- | --- |
| 1 | 1 | mockup确定 | 30d | 2020-04-20 | 2020-05-29 |  | 与富士一起确定mockup最终稿 |
| 2 | 2 | **数据定义** | 10d | 2020-06-01 | 2020-06-12 |  |  |
| 3 | 2.1 | 数据定义-零件定义 | 10d | 2020-06-01 | 2020-06-12 | 1 | 定义零件,字段:简称,描述,类型,供应商,标准单价,状态 |
| 4 | 2.2 | 数据定义-耗材定义 | 10d | 2020-06-01 | 2020-06-12 | 1 | 定义耗材,字段:简称,描述,类型,更换频率,单次保养平均耗材成本,供应商,标准单价,状态 |
| 5 | 2.3 | 数据定义-富士类别 | 10d | 2020-06-01 | 2020-06-12 | 1 | 富士类别关联关系,字段:设备类型I,设备类型II,富士I类,富士II类 |
| 6 | 2.4 | 数据定义-富士II类 | 10d | 2020-06-01 | 2020-06-12 | 1 | 富士II类详情编辑,字段:富士I类,简称,描述,人工费,维保服务费,备用机成本,维保额外维修费,零件,耗材 |
| 7 | 3 | **资产管理** | 10d | 2020-06-15 | 2020-06-26 |  |  |
| 8 | 3.1 | 资产管理-设备 | 10d | 2020-06-15 | 2020-06-26 | 3, 4, 5, 6 | 设备详情页面关联零件和耗材,富士分类一类和二类 |
| 9 | 3.2 | 资产管理-合同 | 10d | 2020-06-15 | 2020-06-26 | 3, 4, 5, 6 | 合同详情页面关联零件和耗材 |
| 10 | 4 | **估价模块** | 50d | 2020-06-29 | 2020-09-04 |  |  |
| 11 | 4.1 | 估价模块-估价参数 | 10d | 2020-06-29 | 2020-07-10 | 9 | 估价参数设置,字段:医院等级,医院等级系数,信息系统使用费,每月工作时长,单位人工成本,小额成本 |
| 12 | 4.2 | 估价模块-估价执行(输入条件) | 10d | 2020-06-29 | 2020-07-10 | 9 | 估价条件,内容:估价前提条件,设备清单,备用机清单,维保对耗材的覆盖情况,零件表,CT球管登记表 |
| 13 | 4.3 | 估价模块-估价执行(结果生成) | 10d | 2020-06-29 | 2020-07-10 | 9 | 根据输入条件生成最终定价表和成本明细表,首次以默认值计算 |
| 14 | 4.4 | 估价模块-估价执行(预测人工费) | 10d | 2020-07-13 | 2020-07-24 | 13 | 根据富士II类(人工费),估价前提条件(所需工程师数量),估价模块参数(单位人工成本)计算得出 |
| 15 | 4.5 | 估价模块-估价执行(预测维保服务费) | 10d | 2020-07-13 | 2020-07-24 | 13 | 根据富士II类(维保服务费只包括全保和技术保),计算得出 |
| 16 | 4.6 | 估价模块-估价执行(预测备用机成本) | 10d | 2020-07-27 | 2020-08-07 | 15 | 根据富士II类(备用机成本),现有设备数量以及故障率参数,计算得出 |
| 17 | 4.7 | 估价模块-估价执行(预测维保额外保养费) | 10d | 2020-08-10 | 2020-08-21 | 16 | 根据富士II类(耗材)中无维保的耗材以及耗材定义中"更换频率","单次保养平均耗材成本",计算得出 |
| 18 | 4.8 | 估价模块-估价执行(预测维保额外维修费) | 10d | 2020-08-24 | 2020-09-04 | 17 | 根据富士II类(维保额外维修费,维保服务费中的"维保种类",零件),计算得出 |
| 19 | 5 | **库存管理** | 30d | 2020-07-13 | 2020-08-21 |  |  |
| 20 | 5.1 | 库存管理-零件库 | 30d | 2020-07-13 | 2020-08-21 | 13 | 零件库,字段:系统编号,序列号,简称,描述,类型,关联设备,供应商,单价,购入日期,采购单号,状态 |
| 21 | 5.2 | 库存管理-耗材库 | 30d | 2020-07-13 | 2020-08-21 | 13 | 耗材库,字段:系统编号,批次号,简称,描述,供应商,关联设备,富士II类,单价,购入日期,采购单号,数量,状态 |
| 22 | 5.3 | 库存管理-外购维修服务库 | 30d | 2020-07-13 | 2020-08-21 | 13 | 外购维修服务库,字段:系统编号,关联设备,服务次数,合同开始时间,合同结束时间,金额,状态 |
| 23 | 5.4 | 库存管理-备用机库 | 30d | 2020-07-13 | 2020-08-21 | 13 | 备用机库,字段:系统编号,序列号,月租,富士II类,租用开始日期,租用结束日期 |
| 24 | 6 | 运营管理-作业报告 | 30d | 2020-07-13 | 2020-08-21 | 13 | 作业报告页面添加耗材信息,服务表 |

| ID | WBS | Task | Duration | Start | Finish | Predecessors | 描述 |
| --- | --- | --- | --- | --- | --- | --- | --- |
| 25 | 7 | **估价模块-估价执行(实绩)** | 15d | 2020-08-24 | 2020-09-11 | 24 |  |
| 26 | 7.1 | 人工费 | 15d | 2020-08-24 | 2020-09-11 |  | 估价前提条件中"实际工程师数量"*估价参数设置中"每月工作时长"和单位人工成本 |
| 27 | 7.2 | 维保费 | 15d | 2020-08-24 | 2020-09-11 |  | 按月分摊系统中录入的合同金额 |
| 28 | 7.3 | 备用机成本 | 15d | 2020-08-24 | 2020-09-11 |  | 月统计备用机库中的备用机数量和实际月租金 |
| 29 | 7.4 | 维保额外保养费 | 15d | 2020-08-24 | 2020-09-11 |  | 统计保养作业报告中耗材（设备没有合同或者该耗材不覆盖）的金额 |
| 30 | 7.5 | 维保额外维修费 | 15d | 2020-08-24 | 2020-09-11 |  | 统计维修作业报告中零件（设备没有合同或者该零件不覆盖）的金额 + 维修作业报告中外购维修服务费 |
